# Product Management for Theremizer

Schedule from MS Project, 2019-11-06 to 2019-12-12.
ASG Software Solutions

## Calendars

- Standard: Mon-Fri 08:00-12:00, 13:00-17:00; Sat-Sun off.

## Resources

| Resource |
| --- |
| Jeff |
| Bader |
| Kai |
| Andrew |

## Schedule

| ID | WBS | Task | Type | Duration | Start | Finish | Predecessors | Total slack | Free slack | Resources | Work | Text2 | Text7 |
| --- | --- | --- | --- | --- | --- | --- | --- | --- | --- | --- | --- | --- | --- |
| 1 | 1 | **Prototyping Hardware & Processor** |  | 8d | 2019-11-06 | 2019-11-15 |  | 0d |  |  | 152h |  |  |
| 2 | 1.1 | **Finalize Sound Generator** |  | 7d | 2019-11-06 | 2019-11-14 |  | 0d |  |  | 56h |  |  |
| 3 | 1.1.1 | Move breadboard prototype to protoboard | manual | 5d | 2019-11-06 | 2019-11-12 |  |  |  | Jeff | 40h | VPEND/></VP> | Goals and Objectives, List of Constraints |
| 4 | 1.1.2 | Test functionality |  | 2d | 2019-11-13 | 2019-11-14 | 3 | 1d | 0d | Jeff | 16h |  |  |
| 5 | 1.1.3 | Protoboard functional | milestone | 0d | 2019-11-14 | 2019-11-14 | 4 | 1d |  |  |  |  |  |
| 6 | 1.2 | **Finalize filter design** |  | 4d | 2019-11-06 | 2019-11-11 |  | 4d |  |  | 32h |  |  |
| 7 | 1.2.1 | Select trim resistor values |  | 2d | 2019-11-06 | 2019-11-07 |  | 4d | 0d | Andrew | 16h |  |  |
| 8 | 1.2.2 | Test with Sound Generator |  | 2d | 2019-11-08 | 2019-11-11 | 7 | 4d | 0d | Andrew | 16h |  |  |
| 9 | 1.2.3 | Filters and embiggens signal correctly | milestone | 0d | 2019-11-11 | 2019-11-11 | 8 | 4d |  |  |  |  |  |
| 10 | 1.3 | **Implement Processor CV Generation** |  | 8d | 2019-11-06 | 2019-11-15 |  | 0d |  |  | 64h |  |  |
| 11 | 1.3.1 | Research ADC reading and PWM output |  | 2d | 2019-11-06 | 2019-11-07 |  | 0d |  | Bader | 16h |  |  |
| 12 | 1.3.2 | Write code |  | 4d | 2019-11-08 | 2019-11-13 | 11 | 0d |  | Bader | 32h |  |  |
| 13 | 1.3.3 | Test code and rewrite if necessary |  | 2d | 2019-11-14 | 2019-11-15 | 12 | 0d |  | Bader | 16h |  |  |
| 14 | 1.3.4 | Processor outputs control voltage in desired range | milestone | 0d | 2019-11-15 | 2019-11-15 | 13 | 0d |  | Bader |  |  |  |
| 15 | 2 | **Finalize Schematic** |  | 2d | 2019-11-18 | 2019-11-19 | 1 | 0d |  |  | 16h |  |  |
| 16 | 2.1 | Add changes |  | 1d | 2019-11-18 | 2019-11-18 | 2, 6 | 0d |  | Andrew | 8h |  |  |
| 17 | 2.2 | Pass ERC | milestone | 0d | 2019-11-18 | 2019-11-18 | 16 | 0d |  |  |  |  |  |
| 18 | 2.3 | Review with team |  | 1d | 2019-11-19 | 2019-11-19 | 17 | 0d |  | Andrew | 8h |  |  |
| 19 | 2.4 | Team agrees schematic is finalized | milestone | 0d | 2019-11-19 | 2019-11-19 | 18 | 0d |  |  |  |  |  |
| 20 | 3 | **Finalize PCB Layout** |  | 3d | 2019-11-20 | 2019-11-22 | 15 | 0d |  |  | 24h |  |  |
| 21 | 3.1 | Layout after schematic finalized |  | 2d | 2019-11-20 | 2019-11-21 | 15 | 0d |  | Andrew | 16h |  |  |
| 22 | 3.2 | Pass DRC | milestone | 0d | 2019-11-21 | 2019-11-21 | 21 | 0d |  |  |  |  |  |
| 23 | 3.3 | Review with team |  | 1d | 2019-11-22 | 2019-11-22 | 22 | 0d |  | Andrew | 8h |  |  |
| 24 | 3.4 | Team agrees layout is finalized | milestone | 0d | 2019-11-22 | 2019-11-22 | 23 | 0d |  |  |  |  |  |

Notes:
- 1: Text1: VPEND<VP ID="0_134424" TYP="0" />
- 2: Text1: VPEND<VP ID="0_168547" TYP="0" />
- 3: Text1: VPDATA:<VP ID="0_80816" TYP="0"><VP ID="0_97923" TYP="3" /><VP ID="0_80996" TYP="2"><VP ID="0_141944" TYP="3" /><VP ID="0_92093" TYP="3" /><VP ID="0_81772" TYP="3" /></VP><VP ID="0_113117" TYP="2"><VP ID="0_141946" TYP="3" /></VP><VP ID="0_17301" TYP="1"

| ID | WBS | Task | Type | Duration | Start | Finish | Predecessors | Total slack | Free slack | Constraint | Resources | Work |
| --- | --- | --- | --- | --- | --- | --- | --- | --- | --- | --- | --- | --- |
| 25 | 4 | **Order & Receive Parts/PCB** |  | 8d | 2019-11-25 | 2019-12-04 | 20 | 0d |  |  |  | 64h |
| 26 | 4.1 | Create BOM from EAGLE |  | 1d | 2019-11-25 | 2019-11-25 | 20 | 0d |  |  | Kai | 8h |
| 27 | 4.2 | Generate GERBER from eagle |  | 1d | 2019-11-26 | 2019-11-26 | 26 | 0d |  |  | Kai | 8h |
| 28 | 4.3 | Place orders on websites |  | 1d | 2019-11-27 | 2019-11-27 | 27 | 0d |  |  | Kai | 8h |
| 29 | 4.4 | Wait for parts |  | 5d | 2019-11-28 | 2019-12-04 | 28 | 0d |  | start no earlier than 2019-11-28 | Kai | 40h |
| 30 | 4.5 | Parts/PCB's received | milestone | 0d | 2019-12-04 | 2019-12-04 | 29 | 0d |  |  |  |  |
| 31 | 5 | **Design Enclosure** |  | 7d | 2019-11-06 | 2019-11-14 |  | 20d |  |  |  | 56h |
| 32 | 5.1 | Research premade vs custom |  | 2d | 2019-11-06 | 2019-11-07 |  | 20d | 0d |  | Kai | 16h |
| 33 | 5.2 | Get case |  | 2d | 2019-11-08 | 2019-11-11 | 32 | 20d | 0d |  | Kai | 16h |
| 34 | 5.3 | Case is received | milestone | 0d | 2019-11-11 | 2019-11-11 | 33 | 23d |  |  | Kai |  |
| 35 | 5.4 | Drill holes and create labels for pots & inputs |  | 3d | 2019-11-12 | 2019-11-14 | 33 | 20d |  |  | Kai | 24h |
| 36 | 5.5 | Enclosure has required holes and looks "cool" | milestone | 0d | 2019-11-06 | 2019-11-06 |  | 27d |  |  |  |  |
| 37 | 6 | **Build up boards** |  | 19d | 2019-11-18 | 2019-12-12 |  | 0d |  |  |  | 56h |
| 38 | 6.1 | Organize parts and highlight placement on layout print out |  | 1d | 2019-12-05 | 2019-12-05 | 25 | 0d |  | start no earlier than 2019-12-04 | Jeff | 8h |
| 39 | 6.2 | Train on reflow oven |  | 1d | 2019-11-18 | 2019-11-18 |  | 18d |  | start no earlier than 2019-11-18 | Jeff | 8h |
| 40 | 6.3 | Place SMD and reflow in oven |  | 3d | 2019-12-06 | 2019-12-10 | 38 | 0d |  |  | Jeff | 24h |
| 41 | 6.4 | Solder through hole components |  | 2d | 2019-12-11 | 2019-12-12 | 40 | 0d |  |  | Jeff | 16h |
| 42 | 6.5 | Board has all components placed | milestone | 0d | 2019-12-12 | 2019-12-12 | 41 | 0d |  |  |  |  |
| 43 | 7 | Design Board Test |  | 1d? | 2019-11-06 | 2019-11-06 |  | 26d |  |  |  |  |
